Task_ID,Task_Name,Start,Finish,Baseline_Finish,Duration_Days,Total_Float_Days,Predecessors,Constraint,Pct_Complete,Actual_Finish,Resourced
T01,Program kickoff,2026-06-01,2026-06-01,2026-06-01,0,0,,ASAP,100,2026-06-01,Y
T02,System requirements,2026-06-02,2026-06-26,2026-06-26,20,0,T01:FS:0,ASAP,100,2026-06-26,Y
T03,Preliminary design,2026-06-29,2026-07-31,2026-07-24,25,0,T02:FS:0,ASAP,100,2026-07-31,Y
T04,Design review,2026-08-03,2026-08-07,2026-07-31,5,0,T03:FS:0,ASAP,100,2026-08-07,Y
T05,Hardware procurement,2026-08-10,2026-09-25,2026-09-18,35,0,T04:FS:0,ASAP,100,2026-09-25,Y
T06,Software architecture,2026-08-10,2026-08-28,2026-08-28,15,5,T04:FS:0,ASAP,100,2026-08-28,Y
T07,Software build 1,2026-08-31,2026-10-02,2026-09-25,25,3,T06:FS:0,ASAP,100,2026-10-02,Y
T08,Ground interface design,2026-08-10,2026-09-11,2026-09-11,25,8,T04:FS:0,ASAP,100,2026-09-11,Y
T09,Test plan,2026-09-14,2026-09-25,2026-09-25,10,10,T08:FS:0,ASAP,100,2026-09-25,Y
T10,Facility readiness survey,2026-09-28,2026-10-09,2026-10-09,10,12,T09:FS:0,ASAP,100,2026-10-09,Y
T11,Hardware assembly,2026-09-28,2026-11-06,2026-10-30,30,0,T05:FS:0,ASAP,100,2026-11-06,Y
T12,Software build 2,2026-10-05,2026-11-20,2026-11-06,35,0,T07:FS:0,ASAP,100,2026-11-20,Y
T13,Hardware integration,2026-11-09,2027-01-15,2026-12-18,50,-6,T11:FS:0;T12:SS:5,ASAP,40,,Y
T14,Software build 3,2026-11-23,2027-01-29,2027-01-08,50,-6,T12:FS:0,ASAP,15,,Y
T15,Interface verification,2026-11-16,2026-12-18,2026-12-11,25,2,T08:FS:0;T07:FS:-2,ASAP,30,,Y
T16,Facility build-out,2026-10-12,2027-02-26,2027-02-12,80,20,T10:FS:0,ASAP,35,,N
T17,Cyber hardening,2026-12-07,2027-02-12,2027-01-29,50,4,T12:FS:0,Must Finish On,0,,Y
T18,Subsystem integration test,2027-01-18,2027-02-26,2027-02-12,30,0,T13:FS:0;T14:FS:0,ASAP,0,,Y
T19,Environmental test prep,2027-01-04,2027-02-12,2027-02-12,30,60,T09:FS:0,ASAP,0,,Y
T20,Operator training material,2027-01-04,2027-03-12,2027-03-12,50,66,T15:FS:0,ASAP,0,,N
T21,System integration test,2027-03-01,2027-04-09,2027-03-26,30,0,T18:FS:0;T16:FS:0,ASAP,0,,Y
T22,Security accreditation package,2027-02-15,2027-04-23,2027-04-02,50,3,T17:FS:5,Start No Earlier Than,0,,Y
T23,Environmental test,2027-04-12,2027-05-07,2027-04-16,20,0,T21:FS:0;T19:FS:0,ASAP,0,,Y
T24,Acceptance test procedure,2027-04-12,2027-05-07,2027-04-30,20,5,T21:FS:0,ASAP,0,,Y
T25,Site installation,2027-05-10,2027-06-04,2027-05-14,20,0,T23:FS:0,ASAP,0,,Y
T26,Documentation delivery,2027-04-26,2027-06-04,2027-05-28,30,48,T22:FS:0,ASAP,0,,Y
T27,Acceptance test,2027-06-07,2027-06-18,2027-05-28,10,0,T25:FS:0;T24:FF:0,ASAP,0,,Y
T28,Training delivery,2027-06-07,2027-06-18,2027-06-04,10,56,T20:FS:0,ASAP,0,,Y
T29,Customer acceptance,2027-06-21,2027-06-21,2027-06-07,0,0,T27:FS:0;T26:FS:0;T28:FS:0,ASAP,0,,Y
T30,Spares planning,2027-01-04,2027-02-26,2027-02-26,40,70,T05:FS:0,ASAP,0,,Y
